# Gestion de Projet

Schedule from MS Project, 2012-03-14 to 2012-06-05, 6 hours a day, costs in €, A marks actual dates.

## Calendars

- Standard: Mon-Fri 09:00-12:00, 14:00-18:00; Sat-Sun off.

## Resources

| Resource | Group | Rate |
| --- | --- | --- |
| Sofian Akrour | MOe | 20 |
| Rémy Albert |  | 20 |
| Sylvain Benech |  | 20 |
| Jeremie Delpech |  | 20 |
| Philippe Gautier |  | 20 |

## Schedule

| ID | WBS | Task | Type | Duration | Start | Finish | Predecessors | Complete | Remaining | Actual start | Actual finish | Baseline start | Baseline finish | Baseline duration | Total slack | Free slack | Constraint | Resources | Work | Actual work | Cost | Baseline cost | Actual cost |
| --- | --- | --- | --- | --- | --- | --- | --- | --- | --- | --- | --- | --- | --- | --- | --- | --- | --- | --- | --- | --- | --- | --- | --- |
| 1 | 1 | **Etude et réflexion** |  | 9.33d | 2012-03-14 A | 2012-03-23 |  | 100% |  |  | 2012-04-23 |  |  |  |  |  |  |  |  |  |  |  |  |
| 2 | 1.1 | Rédaction note de cadrage | milestone | 0d? | 2012-03-14 A | 2012-04-23 A |  | 100% |  |  |  |  |  |  |  |  | finish no earlier than 2012-03-18 | Jeremie Delpech |  |  |  |  |  |
| 3 | 1.2 | Rédaction cahier des charges | milestone | 0d? | 2012-03-19 A | 2012-03-19 A | 2 | 100% |  |  |  |  |  |  |  |  | finish no earlier than 2012-03-24 |  |  |  |  |  |  |
| 4 | 2 | **Préparation de l'environement** |  | 2.33d | 2012-03-26 A | 2012-03-27 A |  | 100% |  |  |  |  |  |  |  |  |  |  |  |  |  |  |  |
| 5 | 2.1 | Installation du serveur d'hébergement |  | 0.67d? | 2012-03-26 A | 2012-03-26 A | 3 | 100% |  |  |  |  |  |  |  |  | finish no earlier than 2012-03-26 |  |  |  |  |  |  |
| 6 | 2.2 | Installation système bases de données |  | 0.67d? | 2012-03-27 A | 2012-03-27 A | 5 | 100% |  |  |  |  |  |  |  |  | finish no earlier than 2012-03-27 |  |  |  |  |  |  |
| 7 | 3 | **Conception** |  | 9.33d | 2012-03-28 A | 2012-04-06 |  | 99% | 0.12d |  |  | 2012-05-09 | 2012-05-09 | 0.5d |  |  |  |  | 5h | 2h | 100 | 60 | 40 |
| 8 | 3.1 | Réalisation schéma base de données |  | 8.83d? | 2012-03-28 A | 2012-04-06 A | 6 | 100% |  |  |  |  |  |  |  |  | finish no earlier than 2012-04-06 |  |  |  |  |  |  |
| 9 | 3.2 | Réflexion sur QCM |  | 8.83d? | 2012-03-28 A | 2012-04-06 A | 6 | 100% |  |  |  |  |  |  |  |  | start no earlier than 2012-03-28 |  |  |  |  |  |  |
| 10 | 3.3 | Définition arborescence site |  | 9.33d? | 2012-03-28 A | 2012-04-06 A | 6 | 100% |  |  |  |  |  |  |  |  | start no earlier than 2012-03-28 |  |  |  |  |  |  |
| 11 | 3.4 | Réflexion sur charte graphique |  | 8.83d? | 2012-03-28 A | 2012-04-06 A | 6 | 100% |  |  |  |  |  |  |  |  | start no earlier than 2012-03-28 |  |  |  |  |  |  |
| 12 | 3.5 | Etablissement structure page Web type | milestone | 0d? | 2012-04-02 A | 2012-04-02 A | 11 | 100% |  |  |  |  |  |  |  |  | start no earlier than 2012-04-02 | Jeremie Delpech |  |  |  |  |  |
| 13 | 3.6 | Redaction du dossier de conception |  | 0.67d? | 2012-03-28 A | 2012-03-28 A |  | 100% |  |  |  |  |  |  |  |  |  |  |  |  |  |  |  |
| 14 | 3.7 | Validation du MCD |  | 0.67d | 2012-04-26 A | 2012-04-26 A |  | 100% |  |  |  |  |  |  |  |  | start no earlier than 2012-04-26 |  |  |  |  |  |  |
| 15 | 3.8 | Réalisation diagramme séquence |  | 0.33d? | 2012-05-11 A | 2012-05-14 |  | 50% | 0.17d? |  |  |  |  |  | 0.17d | 0d | finish no earlier than 2012-05-07 | Philippe Gautier | 2h | 1h | 40 |  | 20 |
| 16 | 3.9 | Traduction du diagramme de séquence en fichiers |  | 0.33d? | 2012-05-11 A | 2012-05-14 | 15 | 50% | 0.17d? |  |  | 2012-05-09 | 2012-05-09 | 0.33d? | -31.83d | 0d |  | Philippe Gautier | 2h | 1h | 40 | 40 | 20 |
| 17 | 3.10 | Rédaction cahier de tests |  | 0.17d? | 2012-05-14 | 2012-05-14 | 16 |  |  |  |  | 2012-05-09 | 2012-05-09 | 0.17d? | -30.83d | 0d |  | Philippe Gautier | 1h |  | 20 | 20 |  |
| 18 | 4 | **Développement** |  | 35d | 2012-04-25 | 2012-06-05 | 11 | 99% | 0.4d | 2012-05-11 |  | 2012-05-02 | 2012-05-30 | 24.28d |  |  |  |  | 32h | 31.5h | 579.99 | 428.01 | 569.99 |
| 19 | 4.1 | **module connexion** |  | 5.92d? | 2012-05-11 A | 2012-05-18 A |  | 100% |  |  |  | 2012-05-02 | 2012-05-10 | 7.33d? |  |  |  |  | 14h | 14h | 220 | 60 | 220 |
| 20 | 4.1.1 | création de la base de donnée |  | 0.67d? | 2012-05-11 A | 2012-05-14 A | 14 | 100% |  |  |  | 2012-05-02 | 2012-05-02 | 0.17d? |  |  |  | Sofian Akrour | 4h | 4h | 80 | 20 | 80 |
| 21 | 4.1.2 | requête sql module connexion |  | 0.08d? | 2012-05-14 A | 2012-05-14 A | 20 | 100% |  |  |  | 2012-05-02 | 2012-05-02 | 0.08d? |  |  |  | Sofian Akrour | 0.5h | 0.5h | 10 | 10 | 10 |
| 22 | 4.1.3 | développement php |  | 1d? | 2012-05-14 A | 2012-05-17 A | 16 | 100% |  |  |  | 2012-05-09 | 2012-05-09 | 0.17d? |  |  |  | Sofian Akrour | 6h | 6h | 120 | 20 | 120 |
| 23 | 4.1.4 | design |  | 1.25d? | 2012-05-14 A | 2012-05-15 A | 17 | 100% |  |  |  | 2012-05-09 | 2012-05-10 | 1d? |  |  |  |  | 3h | 3h |  |  |  |
| 24 | 4.1.5 | tests |  | 0.08d? | 2012-05-18 A | 2012-05-18 A | 22, 21, 20 | 100% |  |  |  | 2012-05-09 | 2012-05-09 | 0.08d? |  |  |  | Sofian Akrour | 0.5h | 0.5h | 10 | 10 | 10 |

| ID | WBS | Task | Type | Duration | Start | Finish | Predecessors | Complete | Remaining | Baseline start | Baseline finish | Baseline duration | Total slack | Free slack | Constraint | Resources | Work | Actual work | Cost | Baseline cost | Actual cost |
| --- | --- | --- | --- | --- | --- | --- | --- | --- | --- | --- | --- | --- | --- | --- | --- | --- | --- | --- | --- | --- | --- |
| 25 | 4.2 | **module étudiant** |  | 7.42d? | 2012-05-18 A | 2012-05-28 |  | 98% | 0.14d? | 2012-05-16 | 2012-05-23 | 5.85d? | 7d | 0d |  |  | 18h | 17.5h | 359.99 | 160 | 349.99 |
| 26 | 4.2.1 | requête sql |  | 0.56d? | 2012-05-18 A | 2012-05-21 A | 19 | 100% |  | 2012-05-16 | 2012-05-16 | 0.37d? |  |  |  | Sofian Akrour [90%] | 3h | 3h | 60 | 40 | 60 |
| 27 | 4.2.2 | développement php |  | 0.93d? | 2012-05-21 A | 2012-05-23 | 26 | 90% | 0.09d? | 2012-05-16 | 2012-05-16 | 0.56d? | 10.95d |  |  | Sofian Akrour [90%] | 5h | 4.5h | 100 | 60 | 90 |
| 28 | 4.2.3 | développement javascript |  | 2.22d? | 2012-05-18 A | 2012-05-28 A | 19 | 100% |  | 2012-05-16 | 2012-05-16 | 0.56d? |  |  |  | Philippe Gautier [45%] | 6h | 6h | 120 | 30 | 120 |
| 29 | 4.2.4 | design |  | 1.11d? | 2012-05-18 A | 2012-05-22 A | 19 | 100% |  | 2012-05-16 | 2012-05-16 | 0.37d? |  |  |  | Philippe Gautier [45%] | 3h | 3h | 60 | 20 | 60 |
| 30 | 4.2.5 | tests |  | 0.18d? | 2012-05-28 A | 2012-05-28 A | 29, 28, 27, 26 | 100% |  | 2012-05-16 | 2012-05-23 | 0.09d? |  |  |  | Philippe Gautier [90%] | 1h | 1h | 19.99 | 10 | 19.99 |
| 31 | 4.3 | **module administrateur** | inactive | 2.5d? | 2012-05-28 | 2012-05-30 |  |  |  | 2012-05-23 | 2012-05-30 | 6.4d? | 5.17d |  |  |  |  |  |  | 114.01 |  |
| 32 | 4.3.1 | requête sql | milestone, inactive | 0d? | 2012-05-30 | 2012-05-30 | 30, 27 |  |  | 2012-05-30 | 2012-05-30 | 0.19d? | 5.83d | 0.67d | start no earlier than 2012-05-30 | Sofian Akrour [90%] |  |  |  | 20.01 |  |
| 33 | 4.3.2 | développement php | milestone, inactive | 0d? | 2012-05-30 | 2012-05-30 | 32 |  |  | 2012-05-30 | 2012-05-30 | 0.28d? | 5.17d | 0d | finish no earlier than 2012-05-30 | Sofian Akrour [90%] |  |  |  | 30 |  |
| 34 | 4.3.3 | développement javascript | milestone, inactive | 0d? | 2012-05-28 | 2012-05-28 | 25 |  |  | 2012-05-23 | 2012-05-23 | 0.67d? | 7.67d | 2.5d |  | Philippe Gautier [50%] |  |  |  | 40 |  |
| 35 | 4.3.4 | design | milestone, inactive | 0d? | 2012-05-28 | 2012-05-28 | 25 |  |  | 2012-05-23 | 2012-05-23 | 0.28d? | 7.67d | 2.5d |  | Philippe Gautier [60%] |  |  |  | 20 |  |
| 36 | 4.3.5 | tests | milestone, inactive | 0d? | 2012-05-30 | 2012-05-30 | 35, 34, 33, 32 |  |  | 2012-05-30 | 2012-05-30 | 0.08d? | 5.17d |  |  | Philippe Gautier [40%] |  |  |  | 4 |  |
| 37 | 4.4 | **module enseignant** | inactive | 3.05d? | 2012-05-28 | 2012-05-31 |  |  |  | 2012-05-30 | 2012-05-30 | 0.45d? | 3.98d |  |  |  | 7.7h |  | 154 | 94 |  |
| 38 | 4.4.1 | requête sql | inactive | 0.17d? | 2012-05-28 | 2012-05-29 | 25, 33 |  |  | 2012-05-30 | 2012-05-30 | 0.17d? | 5.01d | 0d |  | Sofian Akrour | 1h |  | 20 | 20 |  |
| 39 | 4.4.2 | développement php | inactive | 0.5d? | 2012-05-29 | 2012-05-30 | 38 |  |  | 2012-05-30 | 2012-05-30 | 0.25d? | 4.98d | 0d |  | Sofian Akrour; Philippe Gautier [50%] | 4.5h |  | 90 | 30 |  |
| 40 | 4.4.3 | développement javascript | inactive | 0.28d? | 2012-05-28 | 2012-05-29 | 28, 34, 33 |  |  | 2012-05-30 | 2012-05-30 | 0.25d? | 6.08d | 0d |  | Philippe Gautier [90%] | 1.5h |  | 30 | 30 |  |
| 41 | 4.4.4 | design | inactive | 0.17d? | 2012-05-29 | 2012-05-29 | 40 |  |  | 2012-05-30 | 2012-05-30 | 0.17d? | 6.08d |  |  | Philippe Gautier [50%] | 0.5h |  | 10 | 10 |  |
| 42 | 4.4.5 | tests | inactive | 0.03d? | 2012-05-30 | 2012-05-31 | 40, 39, 38 |  |  | 2012-05-30 | 2012-05-30 | 0.03d? | 3.98d |  |  | Philippe Gautier | 0.2h |  | 4 | 4 |  |
| 43 | 5 | **Rédaction des livrables et préparation de la présentation** |  | 34.5d | 2012-04-25 | 2012-06-05 |  |  |  | 2012-04-25 | 2012-06-05 | 34.5d |  |  |  |  | 1h |  | 20 | 42 |  |
| 44 | 5.1 | rédaction du manuel d'utilisation | inactive | 11h | 2012-05-18 | 2012-05-28 | 24 |  |  | 2012-05-09 | 2012-05-23 | 11h | 7.42d |  |  | Philippe Gautier [5%]; Sofian Akrour [5%] | 1.1h |  | 22 | 22 |  |
| 45 | 5.2 | préparation de la présentation du logiciel |  | 10h | 2012-05-18 | 2012-05-25 | 24 |  |  | 2012-05-09 | 2012-05-23 | 10h | 8.58d |  | start no earlier than 2012-05-05 | Philippe Gautier [5%]; Sofian Akrour [5%] | 1h |  | 20 | 20 |  |
| 46 | 5.3 | soutenance | milestone | 0d | 2012-05-30 | 2012-05-30 |  |  |  | 2012-05-29 | 2012-05-29 | 0d | 5.83d |  | start no earlier than 2012-05-30 |  |  |  |  |  |  |
